# Proyecto de proyecto - v3_sabydom

Schedule from MS Project, 2007-04-10 to 2007-10-31, A marks actual dates.
MercadoLibre

## Calendars

- Estándar: Mon-Fri 09:00-13:00, 15:00-19:00; Sat-Sun off.
- Proyecto UTN: Mon-Sun 09:00-13:00, 15:00-19:00. Exceptions (off unless hours are given): 2007-05-24 to 2007-05-30, 2007-07-23 to 2007-08-04, 2007-09-21 to 2007-09-27.

## Resources

| Resource |
| --- |
| Grupo |
| yepes |
| Team |

## Schedule

| ID | WBS | Task | Type | Duration | Start | Finish | Predecessors | Complete | Remaining | Total slack | Free slack | Constraint | Calendar |
| --- | --- | --- | --- | --- | --- | --- | --- | --- | --- | --- | --- | --- | --- |
| 1 | 1 | **Gestion del proyecto** |  | 177d? | 2007-04-10 A | 2007-10-30 |  | 29% | 125.5d? | 1d |  |  |  |
| 2 | 1.1 | **Definición del proyecto** |  | 7d | 2007-04-10 A | 2007-04-16 |  | 99% | 0d | 58.72d | 0d |  |  |
| 3 | 1.1.1 | Presentacion de propuestas | milestone | 0d | 2007-04-10 | 2007-04-10 |  |  |  | 65.72d |  |  |  |
| 4 | 1.1.2 | Presentacion de nuevas propuestas |  | 7d | 2007-04-10 A | 2007-04-16 A |  | 100% |  |  |  |  |  |
| 5 | 1.1.3 | Aprobación de propuesta | milestone | 0d | 2007-04-16 | 2007-04-16 | 4 |  |  | 58.72d |  |  |  |
| 6 | 1.2 | **Propuesta** |  | 7d | 2007-04-17 A | 2007-04-23 | 2 | 99% | 0d | 51.72d | 0d |  |  |
| 7 | 1.2.1 | Entrevistas |  | 7d | 2007-04-17 A | 2007-04-23 A |  | 100% |  |  |  |  |  |
| 8 | 1.2.2 | Definición de objetivos, alcance y funcionalidades |  | 7d | 2007-04-17 A | 2007-04-23 A |  | 100% |  |  |  |  |  |
| 9 | 1.2.3 | Elaboracion del cronograma del proyecto |  | 7d | 2007-04-17 A | 2007-04-23 A |  | 100% |  |  |  |  |  |
| 10 | 1.2.4 | Entrega del Plan de Desarrollo | milestone | 0d | 2007-04-23 | 2007-04-23 | 8, 9 |  |  | 51.72d |  |  |  |
| 11 | 1.3 | **Análisis** |  | 51d? | 2007-04-24 A | 2007-06-20 | 6 | 94% | 3.28d? | 4d | 0d |  |  |
| 12 | 1.3.1 | Desarrollo de casos de uso de Negocio |  | 2d | 2007-04-24 A | 2007-04-25 A |  | 100% |  |  |  | start no earlier than 2007-04-24 |  |
| 13 | 1.3.2 | Desarrollo de casos de uso |  | 12d | 2007-05-01 A | 2007-05-12 A | 12 | 100% |  |  |  | start no earlier than 2007-05-01 |  |
| 14 | 1.3.3 | Análisis de factibilidad técnica |  | 6d | 2007-04-24 A | 2007-04-29 A |  | 100% |  |  |  |  |  |
| 15 | 1.3.4 | Análisis de factibilidad operativa |  | 8d | 2007-04-27 A | 2007-05-04 A |  | 100% |  |  |  | start no earlier than 2007-04-27 |  |
| 16 | 1.3.5 | Análisis de circuitos operativos (modelo de objetos de negocio) |  | 10d | 2007-05-04 A | 2007-05-13 A |  | 100% |  |  |  | start no earlier than 2007-05-04 |  |
| 17 | 1.3.6 | Análisis de posibles tecnologias |  | 20d | 2007-05-12 A | 2007-06-07 A |  | 100% |  |  |  | start no earlier than 2007-05-12 |  |
| 18 | 1.3.7 | Formalizacion de requerimientos |  | 12d | 2007-05-13 A | 2007-05-31 A | 13 | 100% |  |  |  | start no earlier than 2007-05-12 |  |
| 19 | 1.3.8 | Diagrama Entidad Relacion |  | 5d | 2007-05-12 A | 2007-05-16 A |  | 100% |  |  |  | start no earlier than 2007-05-12 |  |
| 20 | 1.3.9 | Diagramas de actividad |  | 10d | 2007-05-12 A | 2007-05-21 A |  | 100% |  |  |  | start no earlier than 2007-05-12 |  |
| 21 | 1.3.10 | Fechas de finales Mayo |  | 7d | 2007-05-22 A | 2007-05-30 A |  | 100% |  |  |  | must finish on 2007-05-30 | Estándar |
| 22 | 1.3.11 | Análisis de factibilidad económica |  | 7d? | 2007-06-11 | 2007-06-17 |  |  |  | 7d |  | start no earlier than 2007-06-11 |  |
| 23 | 1.3.12 | Análisis ley de Proteccion de datos personales |  | 10d | 2007-06-11 A | 2007-06-20 A |  | 100% |  |  |  | start no earlier than 2007-06-11 |  |
| 24 | 1.4 | **Capacitación** |  | 20d | 2007-06-10 A | 2007-06-29 | 11SS | 20% | 16d | 104d |  |  |  |
| 25 | 1.4.1 | Capacitación en tecnologías seleccionadas |  | 20d | 2007-06-10 A | 2007-06-29 | 27 | 20% | 16d | 104d |  | start no earlier than 2007-05-15 |  |

| ID | WBS | Task | Duration | Start | Finish | Predecessors | Complete | Remaining | Total slack | Free slack | Constraint | Calendar |
| --- | --- | --- | --- | --- | --- | --- | --- | --- | --- | --- | --- | --- |
| 26 | 1.5 | **Diseño** | 32d | 2007-06-08 A | 2007-07-09 | 17 | 4% | 30.59d | -1d | 0d |  |  |
| 27 | 1.5.1 | Selección de tecnologias | 2d | 2007-06-08 | 2007-06-09 | 18 |  |  | 7.5d | 0d | start no earlier than 2007-05-30 |  |
| 28 | 1.5.2 | Diseño de la Arquitectura | 9d | 2007-06-10 A | 2007-06-18 | 27 | 50% | 4.5d | 3d | 0d |  |  |
| 29 | 1.5.3 | Diseño del modelo de datos | 5d | 2007-06-19 | 2007-06-23 | 28 |  |  | 3d | 0d |  |  |
| 30 | 1.5.4 | **modelo de análisis y diseño** | 16d | 2007-06-24 | 2007-07-09 | 29 |  |  | -1d | 0d |  |  |
| 31 | 1.5.4.1 | Diseño Modulo de Turnos | 12d | 2007-06-24 | 2007-07-05 |  |  |  | 3d |  |  |  |
| 32 | 1.5.4.2 | Diseño Modulo de Análisis clínicos | 9d | 2007-06-24 | 2007-07-02 |  |  |  | 6d |  |  |  |
| 33 | 1.5.4.3 | Diseño Modulo de historia clinicas | 11d | 2007-06-24 | 2007-07-04 |  |  |  | 4d |  |  |  |
| 34 | 1.5.4.4 | Diseño Modulo de Facturacion | 12d | 2007-06-28 | 2007-07-09 |  |  |  | -1d | 0d | start no earlier than 2007-06-28 |  |
| 35 | 1.5.4.5 | Diseño Modulo de configuración del sistema (ABM) | 8d | 2007-06-28 | 2007-07-05 |  |  |  | 3d |  | start no earlier than 2007-06-28 |  |
| 36 | 1.5.4.6 | Diseño Interfases entre modulos | 10d | 2007-06-28 | 2007-07-07 |  |  |  | 1d |  | start no earlier than 2007-06-28 |  |
| 37 | 1.5.5 | **Presentación comercial** | 14d | 2007-06-21 | 2007-07-04 | 11 |  |  | 4d |  |  |  |
| 38 | 1.5.5.1 | Video de presentacion | 14d | 2007-06-21 | 2007-07-04 |  |  |  | 4d |  |  |  |
| 39 | 1.5.5.2 | Armado de la presentación | 10d | 2007-06-21 | 2007-06-30 |  |  |  | 8d |  |  |  |
| 40 | 1.6 | **Desarrollo** | 48d | 2007-07-09 | 2007-09-07 | 26 |  |  | 0d |  |  |  |
| 41 | 1.6.1 | Modulo de configuración del sistema (ABM) | 7d | 2007-07-10 | 2007-07-16 |  |  |  | 1d | 0d |  |  |
| 42 | 1.6.2 | Fechas de finales Julio | 20d | 2007-07-09 | 2007-08-04 |  |  |  | -1d | 0d | must finish on 2007-08-04 | Estándar |
| 43 | 1.6.3 | Modulo de Turnos | 10d | 2007-07-17 | 2007-08-08 | 41 |  |  | 1d | 0d |  |  |
| 44 | 1.6.4 | Modulo de Análisis clínicos | 10d | 2007-08-09 | 2007-08-18 | 43 |  |  | 1d | 0d |  |  |
| 45 | 1.6.5 | Modulo de historia clinicas | 10d | 2007-08-19 | 2007-08-28 | 44 |  |  | 1d | 0d |  |  |
| 46 | 1.6.6 | Modulo de Facturacion | 10d | 2007-08-29 | 2007-09-07 | 45 |  |  | 1d |  |  |  |
| 47 | 1.7 | **Testeo** | 31d | 2007-09-08 | 2007-10-15 | 40 |  |  | 1d | 0d |  |  |
| 48 | 1.7.1 | Armado de casos de prueba | 4d | 2007-09-08 | 2007-09-11 |  |  |  | 4d | 3d |  |  |
| 49 | 1.7.2 | Carga de datos de testeo | 7d | 2007-09-08 | 2007-09-14 |  |  |  | 1d | 0d |  |  |
| 50 | 1.7.3 | Testeo de Modulo de configuración del sistema (ABM) | 4d | 2007-09-15 | 2007-09-18 | 48, 49 |  |  | 1d | 0d |  |  |
| 51 | 1.7.4 | Testeo de Modulo de Turnos | 10d | 2007-09-19 | 2007-10-05 | 50 |  |  | 1d | 0d |  |  |
| 52 | 1.7.5 | Testeo de Modulo de Análisis clínicos | 7d | 2007-09-19 | 2007-10-02 | 50 |  |  | 4d | 3d |  |  |
| 53 | 1.7.6 | Testeo de Modulo de historia clinicas | 8d | 2007-09-19 | 2007-10-03 | 50 |  |  | 3d | 2d |  |  |
| 54 | 1.7.7 | Testeo de Modulo de Facturacion | 4d | 2007-09-19 | 2007-09-29 | 50 |  |  | 7d | 6d |  |  |
| 55 | 1.7.8 | Testeo de integracion | 10d | 2007-10-06 | 2007-10-15 | 51, 52, 53, 54 |  |  | 1d |  |  |  |
| 56 | 1.7.9 | Correccion de bugs | 24d | 2007-09-15 | 2007-10-15 | 50SS |  |  | 1d |  |  |  |
| 57 | 1.7.10 | Fechas de finales Septiembre | 7d | 2007-09-19 | 2007-09-27 |  |  |  | 0d |  | must finish on 2007-09-27 | Estándar |

Notes:
- 39: Powerpoint

| ID | WBS | Task | Type | Duration | Start | Finish | Predecessors | Total slack | Constraint |
| --- | --- | --- | --- | --- | --- | --- | --- | --- | --- |
| 58 | 1.8 | **Documentación** |  | 15d | 2007-09-08 | 2007-09-29 | 40 | 32d |  |
| 59 | 1.8.1 | Desarrollo del manual de usuario |  | 15d | 2007-09-08 | 2007-09-29 |  | 32d |  |
| 60 | 1.8.2 | Presentación de documentación final |  | 15d | 2007-09-08 | 2007-09-29 |  | 32d |  |
| 61 | 1.9 | **Implementacion** |  | 15d | 2007-10-16 | 2007-10-30 | 47 | 1d |  |
| 62 | 1.9.1 | Modelo de Implementación(Construccion) |  | 10d | 2007-10-16 | 2007-10-25 |  | 6d |  |
| 63 | 1.9.2 | Setup para evaluacion final |  | 15d | 2007-10-16 | 2007-10-30 |  | 1d |  |
| 64 | 1.9.3 | Modelo de despliegue (implementación) |  | 10d | 2007-10-16 | 2007-10-25 |  | 6d |  |
| 65 | 2 | Fin del proyecto | milestone | 0d | 2007-10-31 | 2007-10-31 | 1 | 0d | must finish on 2007-10-31 |
